# Cansat 2016 Project EKC Dover 6Dec

How a schedule from MS Project changed from version to version. A marks actual dates.

## Version 1 (saved 2016-12-06, file Cansat 2016 Project EKC Dover 6Dec.mpp)

| ID | WBS | Task | Duration | Start | Finish | Predecessors | Complete | Total float |
| --- | --- | --- | --- | --- | --- | --- | --- | --- |
| 1 |  | Complete Project Cansat EKC Spitfires 2016 | 116d | 2016-09-26 | 2017-03-05 |  |  |  |
| 3 | 2 | **1.0 Mechanical design** | 57d? | 2016-09-26 A | 2016-12-13 |  | 46% | 0d |
| 4 |  | 1.1 Brainstorming | 1d | 2016-09-26 A | 2016-09-26 A |  | 100% |  |
| 5 |  | 1.2 Design Can on CAD | 30d | 2016-09-27 A | 2016-11-07 | 4 | 50% |  |
| 6 |  | 1.3 Manufacture Protype 3D printing | 21d | 2016-11-08 A | 2016-12-06 | 5 | 50% |  |
| 7 |  | 1.4 Test Protype | 5d | 2016-12-07 | 2016-12-13 | 6 |  |  |
| 8 |  | 1.5 Impact control | 1d? | 2016-09-26 | 2016-09-26 |  |  |  |
| 9 | 3 | **2.0 Electronics hardware** | 68d? | 2016-09-26 A | 2016-12-28 |  | 1% | 0d |
| 10 |  | 2.1 Brainstorming | 1d | 2016-09-26 A | 2016-09-26 A |  | 100% |  |
| 11 |  | 2.2 Protype primary mission | 31d | 2016-09-27 | 2016-11-08 | 10 |  |  |
| 12 |  | 2.2.1 Calibrate primary mission | 1d? | 2016-11-09 | 2016-11-09 | 11 |  |  |
| 13 |  | 2.3 Brainstorm secondry mission | 1d | 2016-09-27 | 2016-09-27 |  |  |  |
| 14 |  | 2.3.1 Protype secondry mission | 50d | 2016-09-28 | 2016-12-06 | 13 |  |  |
| 15 |  | 2.3.2 Calibrate secondry mission | 1d? | 2016-12-07 | 2016-12-07 | 14 |  |  |
| 16 |  | 2.4 Test combined missions | 1d? | 2016-12-08 | 2016-12-08 | 15 |  |  |
| 17 |  | 2.5 Protype solar panels | 1d | 2016-09-26 | 2016-09-26 |  |  |  |
| 18 |  | 2.5.1 test sollar panels | 1d? | 2016-09-26 | 2016-09-26 |  |  |  |
| 19 |  | 2.6 Protype Sheilding | 1d? | 2016-09-26 | 2016-09-26 |  |  |  |
| 20 |  | 2.6.1 Test Sheilding | 1d? | 2016-09-26 | 2016-09-26 |  |  |  |
| 21 |  | 2.7 Component compliance | 1d? | 2016-09-26 | 2016-09-26 |  |  |  |
| 22 |  | 2.7.1 component Location | 1d? | 2016-09-26 | 2016-09-26 |  |  |  |
| 23 |  | 2.7.2 component Vibration Profing | 1d? | 2016-09-26 | 2016-09-26 |  |  |  |
| 24 |  | 2.8.1 PCB design | 31d | 2016-11-01 | 2016-12-13 |  |  |  |
| 25 |  | 2.8.2 PCB board manufacture | 1d | 2016-12-14 | 2016-12-14 | 24 |  |  |
| 26 |  | 2.8.3 PCB test | 7d | 2016-12-15 | 2016-12-23 | 25 |  |  |
| 27 |  | 2.8.4 Final changes to PCB layout | 1d | 2016-12-26 | 2016-12-26 | 26 |  |  |
| 28 |  | 2.8.5 Order PCBS | 1d | 2016-12-27 | 2016-12-27 | 27 |  |  |
| 29 |  | 2.8.6 Populate and test sensor | 1d | 2016-12-28 | 2016-12-28 | 28 |  |  |
| 30 | 4 | **3.0 Software programming** | 98d? | 2016-10-18 | 2017-03-02 |  |  | 0d |
| 31 |  | 3.1 Cansat software ver 1 | 40d | 2016-10-18 | 2016-12-12 |  |  |  |
| 32 |  | 3.2 Cansat software ver 2 | 37d | 2016-12-13 | 2017-02-01 | 31 |  |  |
| 33 |  | 3.3 Cansat software Final | 21d | 2017-02-02 | 2017-03-02 | 32 |  |  |
| 34 |  | <New Task> | 1d? | 2016-10-18 | 2016-10-18 |  |  |  |
| 35 | 5 | **4.0 Parachute** | 47d? | 2016-09-27 A | 2016-11-30 |  | 71% | 0d |
| 36 |  | 4.1 Brainstorming | 1d | 2016-09-27 A | 2016-09-27 A |  | 100% |  |
| 37 |  | 4.2 Make Calculations for paracute | 31d | 2016-09-28 A | 2016-11-09 A | 36 | 100% |  |
| 38 |  | 4.3 make protype parachute | 3d | 2016-11-10 A | 2016-11-14 | 37 | 50% |  |
| 39 |  | 4.4 Test parachute in wind tunnel | 11d | 2016-11-15 | 2016-11-29 | 38 |  |  |
| 40 |  | 4.5 Drop Test parachute with dummy can | 1d? | 2016-11-30 | 2016-11-30 | 39 |  |  |
| 41 | 6 | **5.0 Radio communication** | 1d? | 2016-11-04 A | 2016-11-04 |  | 20% | 0d |
| 42 |  | 5.1 Brainstorming | 1d | 2016-11-04 A | 2016-11-04 A |  | 100% |  |
| 43 |  | 5.2 Protype radio comunications | 1d? | 2016-11-04 | 2016-11-04 |  |  |  |
| 44 |  | 5.2.1 test radio comunications short range | 1d? | 2016-11-04 | 2016-11-04 |  |  |  |
| 45 |  | 5.3 Protype Long range arial | 1d? | 2016-11-04 | 2016-11-04 |  |  |  |
| 46 |  | 5.3.1 test long range arial | 1d? | 2016-11-04 | 2016-11-04 |  |  |  |
| 47 | 7 | **6.0 Advertisement and Sponsorship** | 1d? | 2016-09-27 A | 2016-09-27 |  | 25% | 0d |
| 48 |  | 6.1 Brainstorming | 1d | 2016-09-27 A | 2016-09-27 A |  | 100% |  |
| 49 |  | 6.2 Sponsers | 1d? | 2016-09-27 | 2016-09-27 |  |  |  |
| 50 |  | 6.3 EKC ? | 1d? | 2016-09-27 | 2016-09-27 |  |  |  |
| 51 |  | <New Task> | 1d? | 2016-09-27 | 2016-09-27 |  |  |  |
| 52 | 8 | **7.0 Outreach** | 51d | 2016-09-27 A | 2016-12-06 |  | 73% |  |
| 53 |  | 7.1 Brainstorming | 1d | 2016-09-27 A | 2016-09-27 A |  | 100% |  |
| 54 |  | 7.2 Website | 1d? | 2016-09-27 | 2016-09-27 |  |  |  |
| 55 |  | 7.2.1 Domain name | 1d? | 2016-09-27 | 2016-09-27 |  |  |  |
| 56 |  | 7.3 Team speech | 1d | 2016-09-27 | 2016-09-27 |  |  |  |
| 57 |  | 7.4 Race to The Moon Idea | 51d | 2016-09-27 A | 2016-12-06 A |  | 100% |  |
| 58 |  | 7.4.1 Protype and test ballon rocket | 11d | 2016-10-04 A | 2016-10-18 A |  | 100% |  |
| 59 |  | 7.4.2 Protype school kids rocket race | 35d | 2016-10-19 A | 2016-12-06 |  | 50% |  |
| 60 |  | 7.4.3 design outreach lesson plan for kids | 1d | 2016-09-27 | 2016-09-27 |  |  |  |
| 61 |  | 7.4.4 Travel to school deliver oureach | 1d | 2016-09-27 | 2016-09-27 |  |  |  |
| 62 |  | 7.5 Power point | 11d | 2016-11-22 A | 2016-12-06 |  | 25% |  |
| 63 | 9 | **8.0 Progress reports** | 68d | 2016-10-04 A | 2017-01-05 |  | 4% |  |
| 64 |  | 8.1 Progress report 1 | 1d | 2016-10-18 A | 2016-10-18 A |  | 100% |  |
| 65 |  | 8.2 Progress report 2 | 23d | 2016-11-07 | 2016-12-07 | 64 |  |  |
| 66 |  | 8.3 Progress report 3 | 1d? | 2016-12-08 | 2016-12-08 | 65 |  |  |
| 67 |  | <New Task> | 1d? | 2016-10-04 | 2016-10-04 |  |  |  |
| 68 | 10 | **9.0 Finanance** | 71d? | 2016-11-24 | 2017-03-02 |  |  | 0d |
| 69 |  | 9.1 Cansat parts | 1d? | 2016-11-24 | 2016-11-24 |  |  |  |
| 70 |  | 9.2 Test equipment | 1d? | 2016-11-24 | 2016-11-24 |  |  |  |
| 71 |  | 9.3 travel | 71d | 2016-11-24 | 2017-03-02 |  |  |  |

| ID | WBS | Task | Duration | Start | Finish | Predecessors | Total float |
| --- | --- | --- | --- | --- | --- | --- | --- |
| 72 |  | 9.4 Acodadation | 71d | 2016-11-24 | 2017-03-02 |  |  |
| 73 | 11 | **10.0 Travel** | 85d | 2016-11-04 | 2017-03-02 |  |  |
| 74 |  | 10.1 Define method | 1d? | 2016-11-24 | 2016-11-24 |  |  |
| 75 |  | 10.2 Aquire funding | 1d | 2016-11-25 | 2016-11-25 | 74 |  |
| 76 |  | 10.3 Book accododation | 1d | 2016-11-28 | 2016-11-28 | 75 |  |
| 77 |  | 10.4 Book travel | 1d | 2016-11-29 | 2016-11-29 | 76 |  |
| 78 | 12 | **11.0 Base Station** | 1d? | 2016-11-25 | 2016-11-25 |  | 0d |
| 79 |  | 11.0 Brain storming | 1d? | 2016-11-25 | 2016-11-25 |  |  |
| 80 |  | 11.1 Base station sensors | 1d? | 2016-11-25 | 2016-11-25 |  |  |
| 81 |  | 11.2 Base station communication | 1d? | 2016-11-25 | 2016-11-25 |  |  |
| 82 |  | 11.3 Base station User Interface | 1d? | 2016-11-25 | 2016-11-25 |  |  |
| 83 |  | 11.4 Base station yargi ariel | 1d? | 2016-11-25 | 2016-11-25 |  |  |
| 84 | 13 | **12.0 Backup equipment** | 53d? | 2016-11-25 | 2017-02-07 |  | 0d |
| 85 |  | 12.1 backup CanSat | 53d | 2016-11-25 | 2017-02-07 |  |  |
| 86 |  | 12.2 backup Basestation | 1d? | 2016-11-25 | 2016-11-25 |  |  |
| 87 |  | 12.3 backup Arial | 1d? | 2016-11-25 | 2016-11-25 |  |  |
| 88 |  | 12.4 backup parachute | 1d? | 2016-11-25 | 2016-11-25 |  |  |
| 89 | 14 | **13 .0 Launch procedures** | 1d? | 2016-11-25 | 2016-11-25 |  | 0d |
| 90 |  | 13.1 launchday check sheet | 1d | 2016-11-25 | 2016-11-25 |  |  |

## Version 2 (saved 2016-12-12, file Cansat 2016 Project EKC Dover 12Dec.mpp)

Last finish 2017-03-05 → 2017-03-02 (-3d). Complete tasks 10 → 13.

Added:

| ID | Task | Duration | Start | Finish | Predecessors |
| --- | --- | --- | --- | --- | --- |
| 1 | **Complete Project Cansat EKC Spitfires 2016** | 114d? | 2016-09-26 A | 2017-03-02 |  |
| 60 | 7.5 Travel to school deliver oureach | 1d? | 2016-09-27 | 2016-09-27 | 59 |
| 83 | 12.1 backup brainstorming | 1d? | 2016-11-25 | 2016-11-25 |  |

Removed: 1 Complete Project Cansat EKC Spitfires 2016; 34 <New Task>; 62 7.5 Power point

Changed:

| ID | Task | Start | Finish | Duration | Complete | Total float | Predecessors | Other |
| --- | --- | --- | --- | --- | --- | --- | --- | --- |
| 2 | **1.0 Mechanical design** |  | 2016-12-13 → 2017-01-10 (+28d) | 57d? → 77d | 46% → 34% |  |  |  |
| 7 | 1.5 Impact control | 2016-09-26 → 2016-12-14 (+79d) | 2016-09-26 → 2017-01-10 (+106d) | 1d? → 20d |  |  | none → 6 |  |
| 15 | 2.4 Test combined missions |  |  |  |  |  | 14 → 14, 11 |  |
| 16 | 2.5 Protype solar panels | 2016-09-26 → 2016-12-09 (+74d) | 2016-09-26 → 2016-12-09 (+74d) |  |  |  | none → 15, 17 |  |
| 29 | **3.0 Software programming** | 2016-10-18 A |  | 98d? → 98d | 0% → 41% |  |  |  |
| 30 | 3.1 Cansat software ver 1 | 2016-10-18 A | 2016-12-12 A |  | 0% → 100% |  |  |  |
| 33 | **4.0 Parachute** |  | 2016-11-30 → 2017-02-03 (+65d) | 47d? → 94d | 71% → 79% |  |  |  |
| 36 | 4.3 make protype parachute |  | 2016-11-14 → 2016-12-12 A (+28d) | 3d → 23d | 50% → 100% |  |  |  |
| 37 | 4.4 Test parachute in wind tunnel | 2016-11-15 → 2017-01-16 (+62d) | 2016-11-29 → 2017-01-23 (+55d) | 11d → 6d |  |  |  |  |
| 38 | 4.5 Drop Test parachute with dummy can | 2016-11-30 → 2017-01-24 (+55d) | 2016-11-30 → 2017-02-03 (+65d) | 1d? → 9d |  |  |  |  |
| 39 | **5.0 Radio communication** |  | 2016-11-04 → 2016-11-14 (+10d) | 1d? → 7d? | 20% → 10% |  |  |  |
| 41 | 5.2 Protype radio comunications | 2016-11-04 → 2016-11-07 (+3d) | 2016-11-04 → 2016-11-14 (+10d) | 1d? → 6d |  |  | none → 40 |  |
| 50 | **7.0 Outreach** |  | 2016-12-06 → 2016-12-12 (+6d) | 51d → 55d? | 73% → 65% | none → 0d |  |  |
| 55 | 7.4 Race to The Moon Idea | 2016-09-27 A → 2016-09-28 A (+1d) | 2016-12-06 A → 2016-09-29 A (-68d) | 51d → 2d |  |  | none → 51 |  |
| 56 | 7.4.1 Protype and test ballon rocket | 2016-10-04 A → 2016-09-30 A (-4d) | 2016-10-18 A → 2016-10-14 A (-4d) |  |  |  | none → 55 |  |
| 57 | 7.4.2 Protype school kids rocket race | 2016-10-19 A → 2016-10-18 A (-1d) | 2016-12-06 → 2016-11-22 A (-14d) | 35d → 26d | 50% → 100% |  | none → 56 |  |
| 58 | 7.4.3 design outreach lesson plan for kids | 2016-09-27 → 2016-11-23 A (+57d) | 2016-09-27 → 2016-12-12 (+76d) | 1d → 14d | 0% → 25% |  | none → 57 |  |
| 59 | 7.4.4 design Power point presentation | 2016-09-27 → 2016-11-23 A (+57d) | 2016-09-27 → 2016-12-12 (+76d) | 1d → 14d | 0% → 25% |  | none → 57 | was named 7.4.4 Travel to school deliver oureach |
| 61 | **8.0 Progress reports** | 2016-10-04 A → 2016-10-18 A (+14d) | 2017-01-05 → 2016-12-19 (-17d) | 68d → 45d? | 4% → 63% | none → 0d |  |  |
| 63 | 8.2 Progress report 2 | 2016-11-07 A | 2016-12-07 → 2016-12-12 (+5d) | 23d → 26d | 0% → 66% |  |  |  |
| 64 | 8.3 Progress report 3 | 2016-12-08 → 2016-12-19 (+11d) | 2016-12-08 → 2016-12-19 (+11d) |  |  |  |  |  |
| 65 | <New Task> | 2016-10-04 → 2016-10-18 (+14d) | 2016-10-04 → 2016-10-18 (+14d) |  |  |  |  |  |
| 71 | **10.0 Travel** | 2016-11-04 → 2016-11-24 (+20d) | 2017-03-02 → 2016-11-29 (-93d) | 85d → 4d? |  | none → 0d |  |  |
| 76 | **11.0 Base Station** |  | 2016-11-25 → 2016-12-12 (+17d) | 1d? → 12d |  |  |  |  |
| 77 | 11.0 Brain storming |  | 2016-11-25 → 2016-11-29 (+4d) | 1d? → 3d |  |  |  |  |
| 78 | 11.1 Base station sensors | 2016-11-25 → 2016-11-30 (+5d) | 2016-11-25 → 2016-12-12 (+17d) | 1d? → 9d |  |  | none → 77 |  |
| 79 | 11.2 Base station communication | 2016-11-25 → 2016-11-30 (+5d) | 2016-11-25 → 2016-12-12 (+17d) | 1d? → 9d |  |  | none → 77 |  |
| 80 | 11.3 Base station User Interface | 2016-11-25 → 2016-11-30 (+5d) | 2016-11-25 → 2016-12-12 (+17d) | 1d? → 9d |  |  | none → 77 |  |
| 81 | 11.4 Base station yargi ariel | 2016-11-25 → 2016-11-30 (+5d) | 2016-11-25 → 2016-12-12 (+17d) | 1d? → 9d |  |  | none → 77 |  |
| 82 | **12.0 Backup equipment** |  | 2017-02-07 → 2016-12-12 (-57d) | 53d? → 12d? |  |  |  |  |
| 84 | 12.2 backup CanSat | 2016-11-25 → 2016-11-28 (+3d) | 2017-02-07 → 2016-12-12 (-57d) | 53d → 11d |  |  | none → 83 | was named 12.1 backup CanSat |
| 85 | 12.3 backup Basestation | 2016-11-25 → 2016-11-28 (+3d) | 2016-11-25 → 2016-12-12 (+17d) | 1d? → 11d |  |  | none → 83 | was named 12.2 backup Basestation |
| 86 | 12.4 backup Arial | 2016-11-25 → 2016-11-28 (+3d) | 2016-11-25 → 2016-12-12 (+17d) | 1d? → 11d |  |  | none → 83 | was named 12.3 backup Arial |
| 87 | 12.5 backup parachute | 2016-11-25 → 2016-11-28 (+3d) | 2016-11-25 → 2016-12-12 (+17d) | 1d? → 11d |  |  | none → 83 | was named 12.4 backup parachute |
| 88 | **13 .0 Launch procedures** |  | 2016-11-25 → 2016-12-12 (+17d) | 1d? → 12d? |  |  |  |  |
| 89 | 13.1 launchday check sheet |  | 2016-11-25 → 2016-12-12 (+17d) | 1d → 12d |  |  |  |  |
